# caarray_schedule_2_2_0

Schedule from MS Project, 2008-08-14 to 2009-01-20, A marks actual dates.
Sony Electronics, Inc.

## Calendars

- Standard: Mon-Fri 08:00-12:00, 13:00-17:00; Sat-Sun off. Exceptions (off unless hours are given): 2008-11-11 (Veterans Day), 2008-11-27 to 2008-11-28 (Thanksgiving), 2008-12-24 to 2009-01-02 (Christmas to New Years).

## Resources

| Resource |
| --- |
| rsrinivasa |
| dkokotov |
| klemmj |
| duncanmk |
| slustbader |
| mshestopalov |
| dharley |
| lmisquitta |
| areddy |

## Schedule

| ID | WBS | Task | Type | Duration | Start | Finish | Predecessors | Complete | Remaining | Total slack | Free slack | Constraint | Resources | Work | Actual work |
| --- | --- | --- | --- | --- | --- | --- | --- | --- | --- | --- | --- | --- | --- | --- | --- |
| 1 | 1 | **caArray 2.2.0** |  | 103d? | 2008-08-14 A | 2009-01-20 |  | 24% | 78.28d? | 0d |  |  |  | 1982.2h | 1392.6h |
| 2 | 1.1 | **Inception and Elaboration** |  | 20d | 2008-08-14 A | 2008-09-10 A |  | 100% |  |  |  |  |  | 340.6h | 340.6h |
| 3 | 1.1.1 | Milestone: Begin Inception/Elaboration | milestone | 0d | 2008-08-14 A | 2008-08-14 A |  | 100% |  |  |  |  |  |  |  |
| 4 | 1.1.2 | **Requirements** |  | 20d | 2008-08-14 A | 2008-09-10 A |  | 100% |  |  |  |  |  | 320h | 320h |
| 5 | 1.1.2.1 | Design and Document Use cases |  | 20d | 2008-08-14 A | 2008-09-10 A | 3 | 100% |  |  |  |  | rsrinivasa [50%]; klemmj [50%]; duncanmk [50%]; dkokotov [50%] | 320h | 320h |
| 6 | 1.1.3 | **Project Management** |  | 3d | 2008-09-01 A | 2008-09-04 A |  | 100% |  |  |  |  |  | 20.6h | 20.6h |
| 7 | 1.1.3.1 | Estimate LOEs |  | 2d | 2008-09-01 A | 2008-09-03 A |  | 100% |  |  |  |  | dkokotov | 11h | 11h |
| 8 | 1.1.3.2 | Define release scope |  | 1d | 2008-09-04 A | 2008-09-04 A | 7 | 100% |  |  |  |  | klemmj [30%]; duncanmk [30%]; rsrinivasa [30%]; dkokotov [30%] | 9.6h | 9.6h |
| 9 | 1.1.4 | Milestone: Complete Inception/Elaboration | milestone | 0d | 2008-09-10 A | 2008-09-10 A | 5, 8 | 100% |  |  |  |  |  |  |  |
| 10 | 1.2 | **Construction Alpha1** |  | 55d | 2008-09-10 A | 2008-12-01 | 9 | 47% | 29.12d | 27d |  |  |  | 1128h | 912h |
| 11 | 1.2.1 | Milestone: Begin Alpha1 Construction | milestone | 0d | 2008-09-10 A | 2008-09-10 A | 8 | 100% |  |  |  |  |  |  |  |
| 12 | 1.2.2 | **Implementation** |  | 33.67d | 2008-09-15 A | 2008-10-30 A |  | 100% |  |  |  |  |  | 912h | 912h |
| 13 | 1.2.2.1 | Develop alpha1 features and defects |  | 30d | 2008-09-15 A | 2008-10-27 A | 9 | 100% |  |  |  | finish no earlier than 2008-10-28 | dkokotov [50%]; slustbader; mshestopalov; dharley; rsrinivasa [30%] | 912h | 912h |
| 14 | 1.2.2.2 | Verify Defects on DEV |  | 1d | 2008-10-27 A | 2008-10-28 A | 13 | 100% |  |  |  |  |  |  |  |
| 15 | 1.2.2.3 | Milestone: Deploy Alpha1 to QA | milestone | 1d | 2008-10-29 A | 2008-10-30 A | 14 | 100% |  |  |  |  |  |  |  |
| 16 | 1.2.3 | **Test** |  | 19d | 2008-10-31 | 2008-12-01 | 15 |  |  | 0d |  |  |  | 216h |  |
| 17 | 1.2.3.1 | Verify new features and defects on QA |  | 10d | 2008-10-31 | 2008-11-14 | 15 |  |  | 0d |  |  | lmisquitta [80%] | 64h |  |
| 18 | 1.2.3.2 | Regression Test on QA |  | 10d | 2008-10-31 | 2008-11-14 | 15 |  |  | 0d |  |  | areddy | 80h |  |
| 19 | 1.2.3.3 | Deploy to Stage |  | 1d | 2008-11-17 | 2008-11-17 | 17, 18 |  |  | 0d |  |  |  |  |  |
| 20 | 1.2.3.4 | Verify new features and defects on Stage |  | 7d | 2008-11-18 | 2008-11-26 | 19 |  |  | 19d | 1d |  | lmisquitta [50%] | 28h |  |
| 21 | 1.2.3.5 | Regression Test on Stage |  | 5d | 2008-11-18 | 2008-11-24 | 19 |  |  | 21d | 0d |  | areddy [50%] | 20h |  |
| 22 | 1.2.3.6 | Installer Testing |  | 3d | 2008-11-25 | 2008-12-01 | 21 |  |  | 27d | 0d |  | areddy | 24h |  |
| 23 | 1.2.3.7 | Milestone: Alpha1 testing completed | milestone | 0d | 2008-12-01 | 2008-12-01 | 20, 22 |  |  | 27d | 0d |  |  |  |  |
| 24 | 1.2.4 | Milestone: Complete Alpha1 Construction | milestone | 0d | 2008-12-01 | 2008-12-01 | 23 |  |  | 27d |  |  |  |  |  |

| ID | WBS | Task | Type | Duration | Start | Finish | Predecessors | Complete | Remaining | Total slack | Free slack | Constraint | Resources | Work | Actual work |
| --- | --- | --- | --- | --- | --- | --- | --- | --- | --- | --- | --- | --- | --- | --- | --- |
| 25 | 1.3 | **Construction RC 1** |  | 28d | 2008-10-30 A | 2008-12-12 | 15 | 10% | 25.08d | 18d |  |  |  | 360h | 140h |
| 26 | 1.3.1 | Milestone: Begin RC1 Construction | milestone | 0d | 2008-10-30 | 2008-10-30 | 15 |  |  | 46d |  |  |  |  |  |
| 27 | 1.3.2 | **Implementation** |  | 12d | 2008-10-31 A | 2008-11-18 |  | 42% | 7d | 0d |  |  |  | 280h | 140h |
| 28 | 1.3.2.1 | Develop RC1 features and defects |  | 10d | 2008-10-31 A | 2008-11-14 | 15 | 50% | 5d | 0d |  | finish no earlier than 2008-10-28 | dkokotov [50%]; slustbader; mshestopalov; dharley | 280h | 140h |
| 29 | 1.3.2.2 | Verify Defects on DEV |  | 1d | 2008-11-17 | 2008-11-17 | 28 |  |  | 0d |  |  |  |  |  |
| 30 | 1.3.2.3 | Milestone: Deploy RC1 to QA | milestone | 1d | 2008-11-18 | 2008-11-18 | 29, 19 |  |  | 0d |  |  |  |  |  |
| 31 | 1.3.3 | **Test** |  | 16d | 2008-11-19 | 2008-12-12 | 30 |  |  | 18d |  |  |  | 80h |  |
| 32 | 1.3.3.1 | Verify new features and defects on QA |  | 7d | 2008-11-19 | 2008-12-01 | 30 |  |  | 18d | 0d |  | lmisquitta [50%] | 28h |  |
| 33 | 1.3.3.2 | Regression Test on QA |  | 7d | 2008-11-19 | 2008-12-01 | 30 |  |  | 18d | 0d |  | areddy [50%] | 28h |  |
| 34 | 1.3.3.3 | Deploy to Stage |  | 1d | 2008-12-02 | 2008-12-02 | 32, 20, 21, 33 |  |  | 18d | 0d | start no earlier than 2008-12-01 |  |  |  |
| 35 | 1.3.3.4 | Verify new features and defects on Stage |  | 5d | 2008-12-03 | 2008-12-09 | 34 |  |  | 21d |  |  |  |  |  |
| 36 | 1.3.3.5 | Regression Test on Stage |  | 5d | 2008-12-03 | 2008-12-09 | 34 |  |  | 18d | 0d |  |  |  |  |
| 37 | 1.3.3.6 | Installer Testing |  | 3d | 2008-12-10 | 2008-12-12 | 36 |  |  | 18d | 0d |  | areddy | 24h |  |
| 38 | 1.3.3.7 | App Scan RC1 |  | 5d | 2008-12-03 | 2008-12-09 | 34 |  |  | 21d | 3d |  |  |  |  |
| 39 | 1.3.3.8 | Deployment Test???? |  | 3d | 2008-11-19 | 2008-11-21 | 30 |  |  | 31d |  |  |  |  |  |
| 40 | 1.3.3.9 | Milestone: RC1 testing completed | milestone | 0d | 2008-12-12 | 2008-12-12 | 37, 38 |  |  | 18d | 0d |  |  |  |  |
| 41 | 1.3.4 | Milestone: Complete RC1 Construction | milestone | 0d | 2008-12-12 | 2008-12-12 | 40 |  |  | 18d |  |  |  |  |  |
| 42 | 1.4 | **Construction RC2** |  | 22d | 2008-11-18 | 2008-12-22 | 30 |  |  | 0d |  |  |  | 153.6h |  |
| 43 | 1.4.1 | Milestone: Begin RC2 Construction | milestone | 0d | 2008-11-18 | 2008-11-18 | 30 |  |  | 35d |  |  |  |  |  |
| 44 | 1.4.2 | **Implementation** |  | 9d | 2008-11-19 | 2008-12-03 |  |  |  | 0d |  |  |  |  |  |
| 45 | 1.4.2.1 | Address defects |  | 7d | 2008-11-19 | 2008-12-01 | 30 |  |  | 0d |  |  |  |  |  |
| 46 | 1.4.2.2 | Verify Defects on DEV |  | 1d | 2008-12-02 | 2008-12-02 | 45 |  |  | 0d |  |  |  |  |  |
| 47 | 1.4.2.3 | Milestone: Deploy RC2 to QA | milestone | 1d | 2008-12-03 | 2008-12-03 | 46 |  |  | 0d |  |  |  |  |  |
| 48 | 1.4.3 | **Test** |  | 13d | 2008-12-04 | 2008-12-22 | 47 |  |  | 0d |  |  |  | 153.6h |  |
| 49 | 1.4.3.1 | Verify defects on QA |  | 5d | 2008-12-04 | 2008-12-10 | 47 |  |  | 0d |  |  | lmisquitta [80%] | 32h |  |
| 50 | 1.4.3.2 | Regression Test on QA |  | 5d | 2008-12-04 | 2008-12-10 | 47 |  |  | 0d |  |  | areddy | 40h |  |
| 51 | 1.4.3.3 | Deployment Test???? |  | 3d | 2008-12-04 | 2008-12-08 | 47 |  |  | 23d |  |  |  |  |  |
| 52 | 1.4.3.4 | Deploy to Stage |  | 1d | 2008-12-11 | 2008-12-11 | 49, 50 |  |  | 0d |  |  |  |  |  |
| 53 | 1.4.3.5 | App Scan |  | 3d | 2008-12-12 | 2008-12-16 | 52 |  |  | 17d | 4d |  |  |  |  |
| 54 | 1.4.3.6 | Verify defects on Stage |  | 4d | 2008-12-12 | 2008-12-17 | 52 |  |  | 16d | 3d |  | lmisquitta [80%] | 25.6h |  |
| 55 | 1.4.3.7 | Regression Test on Stage |  | 4d | 2008-12-12 | 2008-12-17 | 52 |  |  | 0d |  |  | areddy | 32h |  |
| 56 | 1.4.3.8 | Installer Testing |  | 3d | 2008-12-18 | 2008-12-22 | 47, 55 |  |  | 0d |  |  | areddy | 24h |  |
| 57 | 1.4.3.9 | Milestone: RC2 testing completed | milestone | 0d | 2008-12-22 | 2008-12-22 | 53, 54, 55, 56 |  |  | 13d | 0d |  |  |  |  |
| 58 | 1.4.4 | Milestone: Complete RC2 Construction | milestone | 0d | 2008-12-22 | 2008-12-22 | 57 |  |  | 13d |  |  |  |  |  |

| ID | WBS | Task | Type | Duration | Start | Finish | Predecessors | Total slack | Free slack |
| --- | --- | --- | --- | --- | --- | --- | --- | --- | --- |
| 59 | 1.5 | **Construction RC3** |  | 16d | 2008-12-10 | 2009-01-13 | 49, 50 | 1d |  |
| 60 | 1.5.1 | Milestone: Begin RC3 Construction | milestone | 0d | 2008-12-10 | 2008-12-10 | 47 | 21d |  |
| 61 | 1.5.2 | **Implementation** |  | 6d | 2008-12-11 | 2008-12-18 |  | 1d |  |
| 62 | 1.5.2.1 | Develop RC2 defects |  | 5d | 2008-12-11 | 2008-12-17 |  | 1d | 0d |
| 63 | 1.5.2.2 | Verify Defects on DEV |  | 1d | 2008-12-18 | 2008-12-18 | 62 | 1d | 0d |
| 64 | 1.5.2.3 | Milestone: Deploy RC3 to QA | milestone | 0d | 2008-12-18 | 2008-12-18 | 63 | 1d | 0d |
| 65 | 1.5.3 | **Test** |  | 10d | 2008-12-19 | 2009-01-13 | 64 | 1d |  |
| 66 | 1.5.3.1 | Verify defects on QA |  | 3d | 2008-12-19 | 2008-12-23 |  | 1d | 0d |
| 67 | 1.5.3.2 | Regression Test on QA |  | 5d | 2008-12-19 | 2009-01-06 |  | 10d |  |
| 68 | 1.5.3.3 | Deploy to Stage |  | 1d | 2009-01-05 | 2009-01-05 | 66 | 1d | 0d |
| 69 | 1.5.3.4 | App Scan |  | 3d | 2009-01-06 | 2009-01-08 | 68 | 1d | 0d |
| 70 | 1.5.3.5 | Verify defects on Stage |  | 3d | 2009-01-09 | 2009-01-13 | 69 | 1d | 0d |
| 71 | 1.5.3.6 | Regression Test on Stage |  | 3d | 2009-01-09 | 2009-01-13 | 69 | 1d | 0d |
| 72 | 1.5.3.7 | Installer Testing |  | 3d | 2008-12-19 | 2008-12-23 | 64 | 3d | 0d |
| 73 | 1.5.3.8 | LSD Compliance Testing |  | 5d | 2009-01-05 | 2009-01-09 | 72 | 3d | 2d |
| 74 | 1.5.3.9 | Milestone: RC3 testing completed | milestone | 0d | 2009-01-13 | 2009-01-13 | 69, 70, 71, 72, 73 | 1d | 0d |
| 75 | 1.5.4 | Milestone: Complete RC3 Construction | milestone | 0d | 2009-01-13 | 2009-01-13 | 74 | 1d | 0d |
| 76 | 1.6 | **Transition** |  | 103d? | 2008-08-14 | 2009-01-20 |  | 0d |  |
| 77 | 1.6.1 | **Configuration and Change Management** |  | 103d? | 2008-08-14 | 2009-01-20 |  | 0d |  |
| 78 | 1.6.1.1 | Milestone: Begin Configuration and Change Mgmt | milestone | 0d | 2008-08-14 | 2008-08-14 |  | 103d |  |
| 79 | 1.6.1.2 | **Documentation** |  | 31d? | 2008-11-18 | 2009-01-14 |  | 4d |  |
| 80 | 1.6.1.2.1 | Milestone: Begin Documentation | milestone | 0d | 2008-11-18 | 2008-11-18 | 30 | 35d |  |
| 81 | 1.6.1.2.2 | **Update User Guide** |  | 15d | 2008-11-18 | 2008-12-11 |  | 16d |  |
| 82 | 1.6.1.2.2.1 | Milestone: Begin User Guide Update | milestone | 0d | 2008-11-18 | 2008-11-18 | 30 | 35d |  |
| 83 | 1.6.1.2.2.2 | GUI change summary to Jill |  | 2d | 2008-11-19 | 2008-11-20 | 30 | 16d | 0d |
| 84 | 1.6.1.2.2.3 | Update User Guide |  | 5d | 2008-11-21 | 2008-12-01 | 83 | 16d | 0d |
| 85 | 1.6.1.2.2.4 | Review User Guide |  | 4d | 2008-12-02 | 2008-12-05 | 84 | 16d | 0d |
| 86 | 1.6.1.2.2.5 | Incorporate feedback to User Guide |  | 4d | 2008-12-08 | 2008-12-11 | 85 | 16d | 0d |
| 87 | 1.6.1.2.2.6 | Milestone: User Guide Updated for 2.1.1 | milestone | 0d | 2008-12-11 | 2008-12-11 | 86 | 16d |  |

| ID | WBS | Task | Type | Duration | Start | Finish | Predecessors | Total slack | Free slack |
| --- | --- | --- | --- | --- | --- | --- | --- | --- | --- |
| 88 | 1.6.1.2.3 | **Update Install Guide** |  | 22d? | 2008-12-03 | 2009-01-14 |  | 4d |  |
| 89 | 1.6.1.2.3.1 | Milestone: Begin Install Guide Update | milestone | 0d | 2008-12-03 | 2008-12-03 | 47 | 26d |  |
| 90 | 1.6.1.2.3.2 | Send install guide update to Jill: RC2 |  | 1d | 2008-12-23 | 2008-12-23 | 56 | 0d |  |
| 91 | 1.6.1.2.3.3 | Update Install Guide: RC3 |  | 3d | 2009-01-05 | 2009-01-07 | 90 | 0d |  |
| 92 | 1.6.1.2.3.4 | Send install guide update to Jill: RC3 |  | 1d? | 2009-01-05 | 2009-01-05 | 72 | 11d |  |
| 93 | 1.6.1.2.3.5 | Update Install Guide: RC3 |  | 2d | 2009-01-08 | 2009-01-09 | 91 | 0d |  |
| 94 | 1.6.1.2.3.6 | Review install guide |  | 3d | 2009-01-12 | 2009-01-14 | 93 | 0d |  |
| 95 | 1.6.1.2.3.7 | Milestone: Complete Install Guide | milestone | 0d | 2009-01-14 | 2009-01-14 | 94 | 0d |  |
| 96 | 1.6.1.2.4 | Milestone: Complete Documentation | milestone | 0d | 2009-01-14 | 2009-01-14 | 87, 95 | 0d |  |
| 97 | 1.6.1.3 | **Upload release artifacts** |  | 4d | 2009-01-14 | 2009-01-20 | 75, 96 | 0d |  |
| 98 | 1.6.1.3.1 | Milestone: Begin preparation of release artifacts | milestone | 0d | 2009-01-14 | 2009-01-14 |  | 4d |  |
| 99 | 1.6.1.3.2 | Prepare 2.2.0 Release Note |  | 1d | 2009-01-15 | 2009-01-15 |  | 3d |  |
| 100 | 1.6.1.3.3 | Prepare 2.2.0 client.jar |  | 1d | 2009-01-15 | 2009-01-15 |  | 3d |  |
| 101 | 1.6.1.3.4 | Prepare 2.2.0 javadoc |  | 1d | 2009-01-15 | 2009-01-15 |  | 3d |  |
| 102 | 1.6.1.3.5 | Upload installer |  | 1d | 2009-01-15 | 2009-01-15 |  | 3d |  |
| 103 | 1.6.1.3.6 | Upload documentation |  | 1d | 2009-01-15 | 2009-01-15 |  | 3d |  |
| 104 | 1.6.1.3.7 | Update Download Center |  | 4d | 2009-01-15 | 2009-01-20 |  | 0d |  |
| 105 | 1.6.1.3.8 | Update Tools Page |  | 2d | 2009-01-15 | 2009-01-16 |  | 2d |  |
| 106 | 1.6.1.3.9 | Update LSD Files Tab |  | 1d | 2009-01-15 | 2009-01-15 |  | 3d |  |
| 107 | 1.6.1.3.10 | Update Landing Site |  | 1d | 2009-01-15 | 2009-01-15 |  | 3d |  |
| 108 | 1.6.1.3.11 | Milestone: Complete release artifact preparation | milestone | 0d | 2009-01-20 | 2009-01-20 | 99, 100, 101, 102, 103, 104, 105, 106, 107 | 0d |  |
| 109 | 1.6.1.4 | Milestone: Complete Configuration Management | milestone | 0d | 2009-01-20 | 2009-01-20 | 108 | 0d |  |
| 110 | 1.6.2 | **Environment** |  | 5d | 2009-01-13 | 2009-01-20 |  | 0d |  |
| 111 | 1.6.2.1 | Milestone: Begin deployment to PROD activities | milestone | 0d | 2009-01-13 | 2009-01-13 | 75 | 5d |  |
| 112 | 1.6.2.2 | Deploy to PROD |  | 2d | 2009-01-14 | 2009-01-15 | 75 | 1d | 0d |
| 113 | 1.6.2.3 | Verify PROD Deployment |  | 2d | 2009-01-16 | 2009-01-19 | 112 | 1d |  |
| 114 | 1.6.2.4 | Milestone: Complete PROD deployment activities | milestone | 0d | 2009-01-20 | 2009-01-20 | 113, 109 | 0d |  |
